# KiwiTeam_Software

How a schedule from MS Project changed from version to version. A marks actual dates.

## Version 1 (data date 2015-01-21, saved 2015-03-10)

Note of the change: Project Schedule

| ID | WBS | Task | Duration | Start | Finish | Predecessors | Complete | Total float |
| --- | --- | --- | --- | --- | --- | --- | --- | --- |
| 1 | 1 | **System Specification** | 14d | 2015-01-21 A | 2015-02-09 A |  | 100% |  |
| 2 |  | Definition of Needs | 6d | 2015-01-21 A | 2015-01-28 A |  | 100% |  |
| 3 |  | Concept Development | 3d | 2015-01-21 A | 2015-01-23 A | 2SS | 100% |  |
| 4 |  | System requirements Assessment | 4d | 2015-01-26 A | 2015-01-29 A | 3 | 100% |  |
| 5 |  | Specs Document elaboration | 5d | 2015-01-26 A | 2015-01-30 A | 4SS | 100% |  |
| 6 |  | Negotiation with client | 1w | 2015-02-02 A | 2015-02-06 A | 5 | 100% |  |
| 7 |  | Contract | 1d | 2015-02-09 A | 2015-02-09 A | 6 | 100% |  |
| 8 | 2 | **System Design** | 15d | 2015-02-10 A | 2015-03-02 A | 7 | 100% |  |
| 9 |  | Analysis of alternatives | 3d | 2015-02-10 A | 2015-02-12 A |  | 100% |  |
| 10 |  | System architecture | 8d | 2015-02-10 A | 2015-02-19 A | 9SS | 100% |  |
| 11 |  | Interface definition | 2d | 2015-02-13 A | 2015-02-16 A | 9 | 100% |  |
| 12 |  | Detail Design of Android App GUI | 6d | 2015-02-17 A | 2015-02-24 A | 11 | 100% |  |
| 13 |  | Detail Design of Android App Logic | 6d | 2015-02-20 A | 2015-02-27 A | 12FS-3d | 100% |  |
| 14 |  | Detal Design of Web Application Front-End | 6d | 2015-02-17 A | 2015-02-24 A | 11 | 100% |  |
| 15 |  | Detail Design of Web Application Logic | 6d | 2015-02-20 A | 2015-02-27 A | 14FS-3d | 100% |  |
| 16 |  | Database Server Design | 7d | 2015-02-17 A | 2015-02-25 A | 11 | 100% |  |
| 17 |  | Design Acceptance | 1d | 2015-03-02 A | 2015-03-02 A | 15, 12, 13, 14, 16 | 100% |  |
| 18 | 3 | **Implementation** | 11d | 2015-03-03 A | 2015-03-17 | 17 | 37% | 43d |
| 19 |  | Implementation of Android GUI | 10d | 2015-03-03 A | 2015-03-16 | 12 | 30% | 1d |
| 20 |  | Implementation of Android Logic | 10d | 2015-03-03 A | 2015-03-16 | 13 | 30% | 1d |
| 21 |  | Implementation of Website Front-End | 10d | 2015-03-03 A | 2015-03-16 | 14 | 30% | 1d |
| 22 |  | Implementation of Website Logic | 11d | 2015-03-03 A | 2015-03-17 | 15 | 30% | 0d |
| 23 |  | Implementation of Database Server | 10d | 2015-03-03 A | 2015-03-16 | 16 | 65% | 44d |
| 24 | 4 | **Unit Testing & Refining** | 11d | 2015-03-17 | 2015-03-31 |  |  | 0d |
| 25 |  | Testing Android GUI | 5d | 2015-03-17 | 2015-03-23 | 19 |  | 1d |
| 26 |  | Testing Android Logic | 5d | 2015-03-17 | 2015-03-23 | 20 |  | 1d |
| 27 |  | Testing Website Front-End | 5d | 2015-03-17 | 2015-03-23 | 21 |  | 1d |
| 28 |  | Testing Website Logic | 5d | 2015-03-18 | 2015-03-24 | 22 |  | 0d |
| 29 |  | Testing Database Server | 5d | 2015-03-25 | 2015-03-31 | 25, 26, 27, 28 |  | 0d |
| 30 | 5 | **System Integration** | 16d | 2015-04-01 | 2015-04-22 | 24 |  | 0d |
| 31 |  | Integration of Android GUI and Logic | 5d | 2015-04-01 | 2015-04-07 | 25, 26 |  | 0d |
| 32 |  | Integration of Website Front-End and Logic | 5d | 2015-04-01 | 2015-04-07 | 26, 27 |  | 0d |
| 33 |  | Integration of Database with Android App | 3d | 2015-04-08 | 2015-04-10 | 29, 31 |  | 0d |
| 34 |  | Integration of Database with Website | 3d | 2015-04-08 | 2015-04-10 | 29, 32 |  | 0d |
| 35 |  | Integration Testing | 3d | 2015-04-13 | 2015-04-15 | 33, 34 |  | 0d |
| 36 |  | System Demo | 5d | 2015-04-16 | 2015-04-22 | 35 |  | 0d |
| 37 | 6 | **Delivery** | 17d | 2015-04-23 | 2015-05-15 |  |  | 0d |
| 38 |  | Deployment on site | 4d | 2015-04-23 | 2015-04-28 | 36 |  | 0d |
| 39 |  | Training | 3d | 2015-04-29 | 2015-05-01 | 38 |  | 0d |
| 40 |  | Client acceptance | 10d | 2015-05-04 | 2015-05-15 | 39 |  | 0d |

## Version 2 (data date 2015-01-21, saved 2015-03-20)

Note of the change: Updated Gantt Chart

Last finish stays 2015-05-15.

Removed: 20 Implementation of Android Logic; 22 Implementation of Website Logic; 26 Testing Android Logic; 28 Testing Website Logic; 33 Integration of Database with Android App; 34 Integration of Database with Website

Changed:

| ID | Task | Start | Finish | Duration | Complete | Total float | Predecessors | Other |
| --- | --- | --- | --- | --- | --- | --- | --- | --- |
| 18 | **Implementation** |  | 2015-03-17 → 2015-03-24 (+7d) | 11d → 16d | 37% → 78% | 43d → 0d |  |  |
| 19 | Implementation of Android GUI & Logic |  | 2015-03-16 → 2015-03-24 (+8d) | 10d → 16d | 30% → 75% | 1d → 0d |  | was named Implementation of Android GUI |
| 20 | Implementation of Website Front-End & Logic |  | 2015-03-16 → 2015-03-24 (+8d) | 10d → 16d | 30% → 75% | 1d → 0d |  | was named Implementation of Website Front-End |
| 21 | Implementation of Database Server |  | 2015-03-16 → 2015-03-24 (+8d) | 10d → 16d | 65% → 85% | 44d → 0d |  |  |
| 22 | **Unit Testing & Refining** | 2015-03-17 → 2015-03-25 (+8d) | 2015-03-31 → 2015-03-30 (-1d) | 11d → 4d |  |  |  |  |
| 23 | Testing Android GUI & Logic | 2015-03-17 → 2015-03-25 (+8d) | 2015-03-23 → 2015-03-30 (+7d) | 5d → 4d |  | 1d → 0d |  | was named Testing Android GUI |
| 24 | Testing Website Front-End & Logic | 2015-03-17 → 2015-03-25 (+8d) | 2015-03-23 → 2015-03-30 (+7d) | 5d → 4d |  | 1d → 0d |  | was named Testing Website Front-End |
| 25 | Testing Database Server |  | 2015-03-31 → 2015-03-30 (-1d) | 5d → 4d |  |  | 23, Testing Android Logic, 24, Testing Website Logic → 21 |  |
| 26 | **System Integration** | 2015-04-01 → 2015-03-31 (-1d) |  | 16d → 17d |  |  |  |  |
| 27 | Integration of Android app & Database | 2015-04-01 → 2015-03-31 (-1d) | 2015-04-07 → 2015-04-09 (+2d) | 5d → 8d |  |  | 23, Testing Android Logic → 23 | was named Integration of Android GUI and Logic |
| 28 | Integration of Website & Database | 2015-04-01 → 2015-03-31 (-1d) | 2015-04-07 → 2015-04-09 (+2d) | 5d → 8d |  |  | Testing Android Logic, 24 → 24 | was named Integration of Website Front-End and Logic |
| 29 | Integration Testing | 2015-04-13 → 2015-04-10 (-3d) |  | 3d → 4d |  |  | Integration of Database with Android App, Integration of Database with Website → 27, 28 |  |

## Version 3 (data date 2015-01-21, saved 2015-05-08)

Note of the change: php login, verify form , password change

Last finish 2015-05-15 → 2015-05-18 (+3d).

Changed:

| ID | Task | Start | Finish | Duration | Total float |
| --- | --- | --- | --- | --- | --- |
| 26 | **System Integration** |  | 2015-04-22 → 2015-05-08 (+16d) | 17d → 29d | 0d → none |
| 27 | Integration of Android app & Database |  | 2015-04-09 → 2015-04-13 (+4d) | 8d → 10d | 0d → 1d |
| 28 | Integration of Website & Database |  | 2015-04-09 → 2015-04-14 (+5d) | 8d → 11d |  |
| 29 | Integration Testing | 2015-04-10 → 2015-04-15 (+5d) | 2015-04-15 → 2015-04-27 (+12d) | 4d → 9d |  |
| 30 | System Demo | 2015-04-16 → 2015-04-28 (+12d) | 2015-04-22 → 2015-05-07 (+15d) | 5d → 8d |  |
| 31 | **Delivery** | 2015-04-23 → 2015-05-08 (+15d) | 2015-05-15 → 2015-05-18 (+3d) | 17d → 7d |  |
| 32 | Deployment on site | 2015-04-23 → 2015-05-08 (+15d) | 2015-04-28 → 2015-05-11 (+13d) | 4d → 2d |  |
| 33 | Training | 2015-04-29 → 2015-05-12 (+13d) | 2015-05-01 → 2015-05-14 (+13d) |  |  |
| 34 | Client acceptance | 2015-05-04 → 2015-05-15 (+11d) | 2015-05-15 → 2015-05-18 (+3d) | 10d → 2d |  |

## Version 4 (data date 2015-01-21, saved 2015-05-09)

Note of the change: Pictures, change password

Last finish stays 2015-05-18. Complete tasks 15 → 25.

Changed:

| ID | Task | Start | Finish | Complete | Total float |
| --- | --- | --- | --- | --- | --- |
| 18 | **Implementation** |  | 2015-03-24 A | 78% → 100% | 0d → none |
| 19 | Implementation of Android GUI & Logic |  | 2015-03-24 A | 75% → 100% | 0d → none |
| 20 | Implementation of Website Front-End & Logic |  | 2015-03-24 A | 75% → 100% | 0d → none |
| 21 | Implementation of Database Server |  | 2015-03-24 A | 85% → 100% | 0d → none |
| 22 | **Unit Testing & Refining** | 2015-03-25 A | 2015-03-30 A | 0% → 100% | 0d → none |
| 23 | Testing Android GUI & Logic | 2015-03-25 A | 2015-03-30 A | 0% → 100% | 0d → none |
| 24 | Testing Website Front-End & Logic | 2015-03-25 A | 2015-03-30 A | 0% → 100% | 0d → none |
| 25 | Testing Database Server | 2015-03-25 A | 2015-03-30 A | 0% → 100% | 0d → none |
| 26 | **System Integration** | 2015-03-31 A |  | 0% → 100% |  |
| 27 | Integration of Android app & Database | 2015-03-31 A | 2015-04-13 A | 0% → 100% | 1d → none |
| 28 | Integration of Website & Database | 2015-03-31 A | 2015-04-14 A | 0% → 100% | 0d → none |
| 29 | Integration Testing | 2015-04-15 A | 2015-04-27 A | 0% → 100% | 0d → none |
| 30 | System Demo | 2015-04-28 A | 2015-05-07 A | 0% → 100% | 0d → none |
